# CPLEX Model 4 Resourse allocation and dates uploaded

Schedule from Primavera P6, 2023-07-23 to 2024-04-12, data date 2023-07-23, costs in USD.

## Calendars

- CPLEX Model 14 - 7 day workweek: Mon-Sun 08:00-16:00.

## Resources

| Resource | Group | Rate |
| --- | --- | --- |
| Worker 1 | labor |  |
| Weekly Expenses | equipment | 28.57 |
| Worker 3 | labor |  |
| Worker 2 | labor |  |

## Schedule

| ID | WBS | Activity | Type | Duration | Start | Finish | Predecessors | Total float | Free float | Constraint | Resources | Cost |
| --- | --- | --- | --- | --- | --- | --- | --- | --- | --- | --- | --- | --- |
|  | 1 | **Milestones** |  |  | 2023-07-23 | 2024-04-12 |  |  |  |  |  |  |
| C0810 |  | Project Begin | milestone | 0d | 2023-07-23 | 2023-07-23 |  | 0d |  |  |  |  |
| C2000 |  | House 2 Start | milestone | 0d | 2023-07-23 | 2023-07-23 | C2010 SS | 265d |  |  |  |  |
| C0900 |  | House 1 Start | milestone | 0d | 2023-08-23 | 2023-08-23 | C1000 SS | 234d |  |  |  |  |
| C5000 |  | House 5 Start | milestone | 0d | 2023-10-21 | 2023-10-21 | C5010 SS | 175d |  |  |  |  |
| C3000 |  | House 3 Start | milestone | 0d | 2023-10-27 | 2023-10-27 | C3010 SS | 169d |  |  |  |  |
| C4000 |  | House 4 Start | milestone | 0d | 2023-11-20 | 2023-11-20 | C4010 SS | 145d |  |  |  |  |
| C4110 |  | House 4 Finish | milestone | 0d | 2024-04-03 | 2024-04-03 | C4100 FF | 9d |  |  |  |  |
| C3110 |  | House 3 Finish | milestone | 0d | 2024-04-07 | 2024-04-07 | C3100 FF | 5d |  |  |  |  |
| C2110 |  | House 2 Finish | milestone | 0d | 2024-04-08 | 2024-04-08 | C2100 FF | 4d |  |  |  |  |
| C1100 |  | House 1 Finish | milestone | 0d | 2024-04-12 | 2024-04-12 | C1090 FF | 0d |  |  |  |  |
| C5110 |  | House 5 Finish | milestone | 0d | 2024-04-12 | 2024-04-12 | C5100 FF | 0d |  |  |  |  |
| C6010 |  | Project Finish | milestone | 0d | 2024-04-12 | 2024-04-12 | C5110 FF, C4110 FF | 0d |  |  |  |  |
|  | H1 | **House 1** |  |  | 2023-08-23 | 2024-04-12 |  |  |  |  |  |  |
| C1000 |  | Masonry |  | 35d | 2023-08-23 | 2023-09-26 | C0810 SS+31d | 0d |  | start on 2023-08-23 | Worker 2 [280 h]; Weekly Expenses [101.82 h] | 2,909.09 |
| C1010 |  | Carpentry |  | 15d | 2023-09-27 | 2023-10-11 | C1000 | 0d |  | start on 2023-09-27 | Worker 2 [120 h]; Weekly Expenses [43.64 h] | 1,246.75 |
| C1020 |  | Plumbing |  | 40d | 2023-10-01 | 2023-11-09 | C1000 | 0d |  | start on 2023-10-01 | Worker 3 [320 h]; Weekly Expenses [116.36 h] | 3,324.67 |
| C1030 |  | Ceiling |  | 15d | 2023-10-06 | 2023-10-20 | C1000 | 0d | 150d | start on 2023-10-06 | Worker 1 [120 h]; Weekly Expenses [43.64 h] | 1,246.75 |
| C1040 |  | Roofing |  | 5d | 2023-10-12 | 2023-10-16 | C1010 | 0d | 24d | start on 2023-10-12 | Worker 2 [40 h]; Weekly Expenses [14.55 h] | 415.58 |
| C1070 |  | Facade |  | 10d | 2023-11-10 | 2023-11-19 | C1020, C1040 | 0d | 140d | start on 2023-11-10 | Worker 3 [80 h]; Weekly Expenses [29.09 h] | 831.17 |
| C1060 |  | Windows |  | 5d | 2024-02-18 | 2024-02-22 | C1040 | 0d | 45d | start on 2024-02-18 | Worker 3 [40 h]; Weekly Expenses [14.55 h] | 415.58 |
| C1080 |  | Garden |  | 5d | 2024-02-24 | 2024-02-28 | C1020, C1040 | 0d | 39d | start on 2024-02-24 | Worker 2 [40 h]; Weekly Expenses [14.55 h] | 415.58 |
| C1050 |  | Painting |  | 10d | 2024-03-19 | 2024-03-28 | C1030 | 0d | 10d | start on 2024-03-19 | Worker 1 [80 h]; Weekly Expenses [29.09 h] | 831.17 |
| C1090 |  | Moving |  | 5d | 2024-04-08 | 2024-04-12 | C1050, C1060, C1070, C1080 | 0d |  | start on 2024-04-08 | Worker 1 [40 h]; Weekly Expenses [14.55 h] | 415.58 |

| ID | WBS | Activity | Type | Duration | Start | Finish | Predecessors | Total float | Free float | Constraint | Resources | Cost |
| --- | --- | --- | --- | --- | --- | --- | --- | --- | --- | --- | --- | --- |
|  | H2 | **House 2** |  |  | 2023-07-23 | 2024-04-08 |  |  |  |  |  |  |
| C2010 |  | Masonry |  | 35d | 2023-07-23 | 2023-08-26 | C0810 SS | 0d |  | start on 2023-07-23 | Worker 1 [280 h]; Weekly Expenses [101.82 h] | 2,909.09 |
| C2020 |  | Carpentry |  | 15d | 2023-08-27 | 2023-09-10 | C2010 | 0d |  | start on 2023-08-27 | Worker 3 [120 h]; Weekly Expenses [43.64 h] | 1,246.75 |
| C2030 |  | Plumbing |  | 40d | 2023-08-27 | 2023-10-05 | C2010 | 0d | 160d | start on 2023-08-27 | Worker 1 [320 h]; Weekly Expenses [116.36 h] | 3,324.67 |
| C2050 |  | Roofing |  | 5d | 2023-09-11 | 2023-09-15 | C2020 | 0d | 165d | start on 2023-09-11 | Worker 3 [40 h]; Weekly Expenses [14.55 h] | 415.58 |
| C2040 |  | Ceiling |  | 15d | 2023-09-16 | 2023-09-30 | C2010 | 0d | 16d | start on 2023-09-16 | Worker 3 [120 h]; Weekly Expenses [43.64 h] | 1,246.75 |
| C2060 |  | Painting |  | 10d | 2023-10-17 | 2023-10-26 | C2040 | 0d | 160d | start on 2023-10-17 | Worker 2 [80 h]; Weekly Expenses [29.09 h] | 831.17 |
| C2070 |  | Windows |  | 5d | 2024-02-28 | 2024-03-03 | C2050 | 0d | 31d | start on 2024-02-28 | Worker 1 [40 h]; Weekly Expenses [14.55 h] | 415.58 |
| C2090 |  | Garden |  | 5d | 2024-03-14 | 2024-03-18 | C2050, C2030 | 0d | 16d | start on 2024-03-14 | Worker 1 [40 h]; Weekly Expenses [14.55 h] | 415.58 |
| C2080 |  | Facade |  | 10d | 2024-03-20 | 2024-03-29 | C2050, C2030 | 0d | 5d | start on 2024-03-20 | Worker 2 [80 h]; Weekly Expenses [29.09 h] | 831.17 |
| C2100 |  | Moving | resource dependent | 5d | 2024-04-04 | 2024-04-08 | C2070, C2080, C2090, C2060 | 0d |  | start on 2024-04-04 | Worker 2 [40 h]; Weekly Expenses [34.55 h] | 987.01 |
|  | H3 | **House 3** |  |  | 2023-10-27 | 2024-04-07 |  |  |  |  |  |  |
| C3010 |  | Masonry |  | 35d | 2023-10-27 | 2023-11-30 | C0810 SS+90d | 0d |  | start on 2023-10-27 | Worker 2 [280 h]; Weekly Expenses [101.82 h] | 2,909.09 |
| C3020 |  | Carpentry |  | 15d | 2023-12-01 | 2023-12-15 | C3010 | 0d |  | start on 2023-12-01 | Worker 2 [120 h]; Weekly Expenses [43.64 h] | 1,246.75 |
| C3030 |  | Plumbing |  | 40d | 2023-12-10 | 2024-01-18 | C3010 | 0d | 46d | start on 2023-12-10 | Worker 1 [320 h]; Weekly Expenses [116.36 h] | 3,324.67 |
| C3050 |  | Roofing |  | 5d | 2023-12-16 | 2023-12-20 | C3020 | 0d | 64d | start on 2023-12-16 | Worker 2 [40 h]; Weekly Expenses [14.55 h] | 415.58 |
| C3040 |  | Ceiling |  | 15d | 2023-12-21 | 2024-01-04 | C3010 | 0d | 54d | start on 2023-12-21 | Worker 2 [120 h]; Weekly Expenses [43.64 h] | 1,246.75 |
| C3070 |  | Windows |  | 5d | 2024-02-23 | 2024-02-27 | C3050 | 0d | 35d | start on 2024-02-23 | Worker 3 [40 h]; Weekly Expenses [14.55 h] | 415.58 |
| C3060 |  | Painting |  | 10d | 2024-02-28 | 2024-03-08 | C3040 | 0d | 25d | start on 2024-02-28 | Worker 3 [80 h]; Weekly Expenses [29.09 h] | 831.17 |
| C3080 |  | Facade |  | 10d | 2024-03-05 | 2024-03-14 | C3050, C3030 | 0d | 19d | start on 2024-03-05 | Worker 2 [80 h]; Weekly Expenses [29.09 h] | 831.17 |
| C3090 |  | Garden |  | 5d | 2024-03-29 | 2024-04-02 | C3050, C3030 | 0d |  | start on 2024-03-29 | Worker 1 [40 h]; Weekly Expenses [14.55 h] | 415.58 |
| C3100 |  | Moving | resource dependent | 5d | 2024-04-03 | 2024-04-07 | C3070, C3080, C3090, C3060 | 0d |  | start on 2024-04-03 | Worker 1 [40 h]; Weekly Expenses [34.55 h] | 987.01 |
|  | H4 | **House 4** |  |  | 2023-11-20 | 2024-04-03 |  |  |  |  |  |  |
| C4010 |  | Masonry |  | 35d | 2023-11-20 | 2023-12-24 | C0810 SS+120d | 0d |  | start on 2023-11-20 | Worker 3 [280 h]; Weekly Expenses [101.82 h] | 2,909.09 |
| C4020 |  | Carpentry |  | 15d | 2023-12-25 | 2024-01-08 | C4010 | 0d |  | start on 2023-12-25 | Worker 3 [120 h]; Weekly Expenses [43.64 h] | 1,246.75 |
| C4050 |  | Roofing |  | 5d | 2024-01-09 | 2024-01-13 | C4020 | 0d | 46d | start on 2024-01-09 | Worker 3 [40 h]; Weekly Expenses [14.55 h] | 415.58 |
| C4030 |  | Plumbing |  | 40d | 2024-01-19 | 2024-02-27 | C4010 | 0d | 10d | start on 2024-01-19 | Worker 1 [320 h]; Weekly Expenses [116.36 h] | 3,324.67 |
| C4040 |  | Ceiling |  | 15d | 2024-01-29 | 2024-02-12 | C4010 | 0d | 20d | start on 2024-01-29 | Worker 3 [120 h]; Weekly Expenses [43.64 h] | 1,246.75 |
| C4070 |  | Windows |  | 5d | 2024-02-29 | 2024-03-04 | C4050 | 0d | 25d | start on 2024-02-29 | Worker 2 [40 h]; Weekly Expenses [14.55 h] | 415.58 |
| C4060 |  | Painting |  | 10d | 2024-03-04 | 2024-03-13 | C4040 | 0d | 16d | start on 2024-03-04 | Worker 1 [80 h]; Weekly Expenses [29.09 h] | 831.17 |
| C4090 |  | Garden |  | 5d | 2024-03-09 | 2024-03-13 | C4050, C4030 | 0d | 16d | start on 2024-03-09 | Worker 3 [40 h]; Weekly Expenses [14.55 h] | 415.58 |
| C4080 |  | Facade |  | 10d | 2024-03-19 | 2024-03-28 | C4050, C4030 | 0d | 1d | start on 2024-03-19 | Worker 3 [80 h]; Weekly Expenses [29.09 h] | 831.17 |
| C4100 |  | Moving | resource dependent | 5d | 2024-03-30 | 2024-04-03 | C4070, C4080, C4090, C4060 | 0d |  | start on 2024-03-30 | Worker 2 [40 h]; Weekly Expenses [34.55 h] | 987.01 |

| ID | WBS | Activity | Type | Duration | Start | Finish | Predecessors | Total float | Free float | Constraint | Resources | Cost |
| --- | --- | --- | --- | --- | --- | --- | --- | --- | --- | --- | --- | --- |
|  | H5 | **House 5** |  |  | 2023-10-21 | 2024-04-12 |  |  |  |  |  |  |
| C5010 |  | Masonry |  | 35d | 2023-10-21 | 2023-11-24 | C0810 SS+90d | 0d |  | start on 2023-10-21 | Worker 1 [280 h]; Weekly Expenses [101.82 h] | 2,909.09 |
| C5020 |  | Carpentry |  | 15d | 2023-11-25 | 2023-12-09 | C5010 | 0d | 65d | start on 2023-11-25 | Worker 1 [120 h]; Weekly Expenses [43.64 h] | 1,246.75 |
| C5030 |  | Plumbing |  | 40d | 2024-01-05 | 2024-02-13 | C5010 | 0d | 30d | start on 2024-01-05 | Worker 2 [320 h]; Weekly Expenses [116.36 h] | 3,324.67 |
| C5040 |  | Ceiling |  | 15d | 2024-01-14 | 2024-01-28 | C5010 | 0d | 16d | start on 2024-01-14 | Worker 3 [120 h]; Weekly Expenses [43.64 h] | 1,246.75 |
| C5050 |  | Roofing |  | 5d | 2024-02-13 | 2024-02-17 | C5020 | 0d | 25d | start on 2024-02-13 | Worker 3 [40 h]; Weekly Expenses [14.55 h] | 415.58 |
| C5060 |  | Painting |  | 10d | 2024-02-14 | 2024-02-23 | C5040 | 0d | 44d | start on 2024-02-14 | Worker 2 [80 h]; Weekly Expenses [29.09 h] | 831.17 |
| C5070 |  | Windows |  | 5d | 2024-03-14 | 2024-03-18 | C5050 | 0d | 20d | start on 2024-03-14 | Worker 3 [40 h]; Weekly Expenses [14.55 h] | 415.58 |
| C5090 |  | Garden |  | 5d | 2024-03-15 | 2024-03-19 | C5050, C5030 | 0d | 19d | start on 2024-03-15 | Worker 2 [40 h]; Weekly Expenses [14.55 h] | 415.58 |
| C5080 |  | Facade |  | 10d | 2024-03-29 | 2024-04-07 | C5050, C5030 | 0d |  | start on 2024-03-29 | Worker 3 [80 h]; Weekly Expenses [29.09 h] | 831.17 |
| C5100 |  | Moving | resource dependent | 5d | 2024-04-08 | 2024-04-12 | C5070, C5080, C5090, C5060 | 0d |  | start on 2024-04-08 | Worker 3 [40 h]; Weekly Expenses [34.55 h] | 987.01 |
